# MS Project File

Schedule from MS Project, 2024-09-16 to 2025-06-06, status date 2024-09-01.

## Calendars

- Standard: Mon-Fri 08:00-12:00, 13:00-17:00; Sat-Sun off.

## Resources

| Resource |
| --- |
| PM1 |
| PM2 |
| RE1 |
| RE4 |
| RE8 |
| RE9 |
| RE10 |
| RE11 |
| RE12 |
| RE18 |
| RE19 |
| RE20 |
| SE1 |
| SE4 |
| SE8 |
| SE9 |
| SE11 |
| SE12 |
| SE13 |
| SE17 |
| PE1 |
| PE2 |
| PE8 |
| PE9 |
| PE10 |
| PE11 |
| PE12 |
| PE16 |
| TE1 |
| TE2 |
| TE3 |
| TE7 |
| TE8 |
| TE9 |
| TE10 |
| TE15 |
| DE3 |
| DE4 |
| DE5 |
| DE6 |
| DE7 |
| DE8 |
| DE9 |
| DE14 |

## Schedule

| ID | WBS | Task | Duration | Start | Finish | Predecessors | Total slack | Resources | Work | Productivity Rate | Amount of Work |
| --- | --- | --- | --- | --- | --- | --- | --- | --- | --- | --- | --- |
| 1 | 1 | **SPM Assignment 1** | 189.23d | 2024-09-16 | 2025-06-06 |  | 0d |  | 1236.72h |  |  |
| 2 | 1.1 | **Phase 1: Project Planning** | 3.69d | 2024-09-16 | 2024-09-19 |  | 0d |  | 14.32h |  |  |
| 3 | 1.1.1 | Write Plan | 1.29d | 2024-09-16 | 2024-09-17 |  | 0d | PM1 [20%] | 2.06h | 31 pages | 3 pages/hr |
| 4 | 1.1.2 | **Review Plan** | 0.75d | 2024-09-17 | 2024-09-18 |  | 0d |  | 11.16h |  |  |
| 5 | 1.1.2.1 | Preparation for Review | 0.16d | 2024-09-17 | 2024-09-17 | 3 | 0d | SE1 [20%]; RE1 [20%]; PE1 [20%]; DE3 [20%]; TE1 [20%] | 4.96h |  | 5 pages/hr |
| 6 | 1.1.2.2 | Review Meeting | 0.2d | 2024-09-17 | 2024-09-18 | 5 | 0d | PM1 [20%]; SE1 [20%]; RE1 [20%]; DE3 [20%]; PE1 [20%]; TE1 [20%] | 6.2h |  | 5 pages/hr |
| 7 | 1.1.3 | Rework | 0.69d | 2024-09-19 | 2024-09-19 | 6 | 0d | PM1 [20%] | 1.1h | 22 defects | 4 defects/hr |
| 8 | 1.2 | **Phase 2: Risk Mitigation and Contingency Planning** | 4.51d | 2024-09-19 | 2024-09-26 |  | 0d |  | 18.45h |  |  |
| 9 | 1.2.1 | Write Plan | 1.47d | 2024-09-19 | 2024-09-23 | 7 | 0d | PM1 [20%] | 2.35h | 47 pages | 4 pages/hr |
| 10 | 1.2.2 | **Review Plan** | 0.85d | 2024-09-23 | 2024-09-24 |  | 0d |  | 14.3h |  |  |
| 11 | 1.2.2.1 | Preparation for Review | 0.29d | 2024-09-23 | 2024-09-24 | 9 | 0d | SE4 [20%]; RE4 [20%]; PE2 [20%]; DE4 [20%]; TE2 [20%] | 9.4h |  | 4 pages/hr |
| 12 | 1.2.2.2 | Review Meeting | 0.24d | 2024-09-24 | 2024-09-24 | 11 | 0d | SE4 [20%]; RE4 [20%]; PE2 [20%]; DE4 [20%]; PM1 [20%]; TE2 [20%] | 4.9h |  | 8 pages/hr |
| 13 | 1.2.3 | Rework | 1.13d | 2024-09-25 | 2024-09-26 | 12 | 0d | PM1 [20%] | 1.8h | 45 pages | 5 defects/hr |
| 14 | 1.3 | **Phase 3: Requirements** | 5.11d | 2024-09-26 | 2024-10-03 |  | 0d |  | 38.97h |  |  |
| 15 | 1.3.1 | Write Requirements | 0.56d | 2024-09-26 | 2024-09-27 | 13 | 0d | RE18 [20%]; RE19 [20%]; RE20 [20%]; RE11 [20%]; RE12 [20%] | 13.44h | 112 required | 5 req/hr |
| 16 | 1.3.2 | Write Use Case Model | 0.77d | 2024-09-27 | 2024-10-01 | 15 | 0d | RE18 [20%]; RE19 [20%]; RE20 [20%]; RE11 [20%]; RE12 [20%] | 12.27h | 46 Use Cases | 3 use case/ 2 hr |
| 17 | 1.3.3 | **Review Requirements/ Use Case Model** | 0.92d | 2024-10-01 | 2024-10-02 |  | 0d |  | 8.91h |  |  |
| 18 | 1.3.3.1 | Preparation for Review requirement | 0.19d | 2024-10-01 | 2024-10-01 | 16 | 0d | SE8 [20%]; PE8 [20%]; DE5 [20%]; TE3 [20%] | 4.98h |  | 18 req/hr / 4 Use Cases/hr |
| 19 | 1.3.3.2 | Preparation for Review use case | 0.36d | 2024-10-01 | 2024-10-01 | 18 | 0d | DE5 [20%]; PE8 [20%]; RE20 [20%]; SE8 [20%]; TE3 [20%] | 0.58h |  |  |
| 20 | 1.3.3.3 | Review Meeting requirement | 0.1d | 2024-10-01 | 2024-10-01 | 19 | 0d | DE5 [20%]; PE8; SE8 [20%]; TE3 [20%]; RE20 [20%] | 0.16h |  |  |
| 21 | 1.3.3.4 | Review Meeting use case | 0.19d | 2024-10-01 | 2024-10-02 | 20 | 0d | SE8 [20%]; PE8 [20%]; DE5 [20%]; RE20 [20%]; TE3 [20%] | 3.2h |  | 28 req/hhr / 6 Use Cases/hr |
| 22 | 1.3.4 | Rework | 1.7d | 2024-10-02 | 2024-10-03 | 21 | 0d | RE18 [20%]; RE19 [20%]; RE20 [20%]; RE11 [20%]; RE12 [20%] | 4.35h | 136 defects | 10 defects/hr |
| 23 | 1.4 | **Phase 4: Analysis** | 3.43d | 2024-10-03 | 2024-10-09 |  | 0d |  | 27.83h |  |  |
| 24 | 1.4.1 | Write Analysis Document | 0.41d | 2024-10-03 | 2024-10-04 | 22 | 0d | SE12 [20%]; SE13 [20%]; SE17 [20%]; SE11 [20%] | 5.28h | 66 pages | 5 pages/hr |

| ID | WBS | Task | Duration | Start | Finish | Predecessors | Total slack | Resources | Work | Amount of Work | Productivity Rate |
| --- | --- | --- | --- | --- | --- | --- | --- | --- | --- | --- | --- |
| 25 | 1.4.2 | **Review Analysis Document** | 1.51d | 2024-10-04 | 2024-10-08 |  | 0d |  | 14.35h |  |  |
| 26 | 1.4.2.1 | Preparation for Analysis Document | 0.58d | 2024-10-04 | 2024-10-08 | 24 | 0d | DE6 [20%]; PE9 [20%]; RE9 [20%]; TE7 [20%] | 13.2h | 4 pages/hr |  |
| 27 | 1.4.2.2 | Review Meeting | 0.18d | 2024-10-08 | 2024-10-08 | 26 | 0d | DE6 [20%]; PE9 [20%]; RE9; SE17 [20%]; TE7 [20%] | 1.15h | 9 pages/hr |  |
| 28 | 1.4.3 | Rework | 0.64d | 2024-10-08 | 2024-10-09 | 27 | 0d | SE12 [20%]; SE13 [20%]; SE17 [20%]; SE11 [20%] | 8.2h | 6 defects/hr | 123 defects |
| 29 | 1.5 | **Phase 5: Design** | 23.16d | 2024-10-09 | 2024-11-11 |  | 0d |  | 101.75h |  |  |
| 30 | 1.5.1 | Write Detailed Design | 1.01d | 2024-10-09 | 2024-10-10 | 28 | 0d | SE12 [20%]; SE13 [20%]; SE17 [20%]; SE11 [20%]; SE4 [20%] | 7.12h | 5 pages/hr | 89 pages |
| 31 | 1.5.2 | **Review Detailed Design** | 9.04d | 2024-10-10 | 2024-10-23 |  | 0d |  | 19.79h |  |  |
| 32 | 1.5.2.1 | Preparation for Detailed Design | 4.66d | 2024-10-10 | 2024-10-23 | 30 | 0d | DE4 [20%]; PE2 [20%]; RE4 [20%]; TE2 [20%] | 18h | 4 pages/hr |  |
| 33 | 1.5.2.2 | Review Detailed Design | 0.28d | 2024-10-23 | 2024-10-23 | 32 | 0d | TE2 [20%]; DE4 [20%]; PE2 [20%]; RE4; SE12 [20%] | 1.79h | 8 pages/hr |  |
| 34 | 1.5.3 | Rework | 1.74d | 2024-10-23 | 2024-10-28 | 33 | 0d | SE12 [70.9%]; SE13 [70.9%]; SE17 [70.9%]; SE11 [216.4%]; SE4 [20%] | 15.49h | 5 defects/hr | 188 defects |
| 35 | 1.5.4 | Write Data Model | 6d | 2024-10-28 | 2024-11-08 | 34 | 0d | SE12 [20%]; SE13 [20%]; SE17 [20%]; SE11 [20%]; SE1 [20%]; SE4 [20%] | 44.8h | 1 pages/hr |  |
| 36 | 1.5.5 | **Review Data Model** | 0.82d | 2024-11-08 | 2024-11-11 |  | 0d |  | 8.68h |  |  |
| 37 | 1.5.5.1 | Preparation for Review | 0.22d | 2024-11-08 | 2024-11-08 | 35 | 0d | DE4 [20%]; PE2 [20%]; RE4 [20%]; TE2 [20%] | 4.2h | 4 pages/hr |  |
| 38 | 1.5.5.2 | Review Meeting | 0.14d | 2024-11-08 | 2024-11-11 | 37 | 0d | DE4 [20%]; PE2 [20%]; SE13 [20%]; TE2 [20%]; RE4 [20%] | 4.48h | 5 pages/hr |  |
| 39 | 1.5.6 | Rework | 0.31d | 2024-11-11 | 2024-11-11 | 38 | 0d | SE11 [20%]; SE12 [20%]; SE13 [20%]; SE8 [20%]; SE9 [20%]; SE17 [20%] | 5.87h | 6 defects/hr | 88 defects |
| 40 | 1.6 | **Phase 6: Coding and Unit Testing** | 81.36d | 2024-11-11 | 2025-03-05 |  | 0d |  | 621.24h |  |  |
| 41 | 1.6.1 | Write Code | 15.83d | 2024-11-11 | 2025-01-29 | 39 | 0d | PE10 [20%]; PE11 [20%]; PE12 [20%]; PE16 [20%]; PE9 [20%] | 456h | 5 SLOC/hr | 3800 SLOC |
| 42 | 1.6.2 | **Unit Testing** | 21.27d | 2025-01-29 | 2025-02-28 |  | 0d |  | 148.02h |  |  |
| 43 | 1.6.2.1 | Prepare/Execute Test Cases | 5.13d | 2025-01-29 | 2025-02-12 | 41 | 0d | PE9 [20%]; PE10 [20%]; PE11 [20%]; PE12 [20%]; PE16 [20%] | 81.92h | 10 Test Cases/Day | 256 test cases |
| 44 | 1.6.2.2 | Fix Found Defects | 6.55d | 2025-02-12 | 2025-02-25 | 43 | 0d | PE11 [40.1%]; PE12 [40.1%]; PE8 [20%]; PE2 [20%]; PE1 [20%] | 42.53h | 8 Defects/Day | 179 Defects |
| 45 | 1.6.2.3 | Test Fixed Defects | 3.05d | 2025-02-25 | 2025-02-28 | 44 | 0d | PE11 [20%]; PE12 [20%]; PE16 [20%]; PE8 [20%]; PE2 [20%] | 23.57h | 12 Defects/Day | 179 Defects |
| 46 | 1.6.3 | **Code Inspection** | 3.15d | 2025-02-28 | 2025-03-05 |  | 0d |  | 17.22h |  |  |
| 47 | 1.6.3.1 | Preparation | 1.05d | 2025-02-28 | 2025-03-03 | 45 | 0d | DE4 [20%]; RE4 [20%]; SE4 [20%]; TE2 [20%] | 0.4h | 113 SLOC/hr |  |
| 48 | 1.6.3.2 | Code Inspection Meeting | 0.5d | 2025-03-03 | 2025-03-03 | 47 | 0d | PE10 [20%]; DE4 [20%]; RE4 [20%]; SE4 [20%]; TE2 [20%] | 1.78h | 189 SLOC/hr |  |
| 49 | 1.6.3.3 | Rework | 1.39d | 2025-03-03 | 2025-03-05 | 48 | 0d | PE9 [20%]; PE10 [20%]; PE11 [20%]; PE12 [20%]; PE16 [20%] | 15.04h | 5 defects/hr | 188 Defects |

| ID | WBS | Task | Duration | Start | Finish | Predecessors | Total slack | Free slack | Resources | Work | Productivity Rate | Amount of Work |
| --- | --- | --- | --- | --- | --- | --- | --- | --- | --- | --- | --- | --- |
| 50 | 1.7 | **Phase 7: Testing** | 175.38d | 2024-10-03 | 2025-06-06 |  | 0d |  |  | 354.36h |  |  |
| 51 | 1.7.1 | Write Test Plan | 8.25d | 2024-10-03 | 2024-10-25 | 22 | 156.89d | 0d | TE7 [20%]; TE8 [20%]; TE9 [20%]; TE10 [20%]; TE15 [20%] | 106.24h | 166 pages | 5 pages/day |
| 52 | 1.7.2 | **Review Test Plan** | 3.19d | 2024-10-25 | 2024-10-30 |  | 156.59d |  |  | 24.63h |  |  |
| 53 | 1.7.2.1 | Preparation | 1.3d | 2024-10-25 | 2024-10-29 | 51 | 156.59d | 0d | SE8 [20%]; DE5 [20%]; PE8 [20%]; RE8 [20%] | 13.2h |  | 4 pages/hr |
| 54 | 1.7.2.2 | Review Meeting | 0.61d | 2024-10-29 | 2024-10-29 | 53 | 156.59d | 0d | TE10 [20%]; DE5 [20%]; PE8 [20%]; RE8 [20%]; SE8 [20%] | 4.15h |  | 8 pages/hr |
| 55 | 1.7.2.3 | Rework | 0.91d | 2024-10-29 | 2024-10-30 | 54 | 156.59d |  | TE7 [20%]; TE8 [20%]; TE9 [20%]; TE10 [20%]; TE15 [20%] | 7.28h | 255 defects | 7 defects/hr |
| 56 | 1.7.3 | Execute Test Plan | 4.78d | 2025-03-05 | 2025-04-29 | 49 | 0d |  | TE7 [20%]; TE8 [20%]; TE9 [20%]; TE10 [20%]; TE15 [20%] | 114.67h | 215 defects | 9 test cases/day |
| 57 | 1.7.4 | Fix Found Defects | 5.53d | 2025-04-29 | 2025-05-08 | 56 | 0d |  | TE7 [20%]; TE8 [20%]; TE9 [20%]; TE10 [20%]; TE1 [20%] | 48.67h | 213 defects | 14 defects/day |
| 58 | 1.7.5 | Test Fixed Defects | 3.28d | 2025-05-08 | 2025-06-06 | 57 | 0d |  | TE7 [20%]; TE8 [20%]; TE9 [20%]; TE10 [20%]; TE15 [20%] | 60.14h | 213 defects | 17 defects/day |
| 59 | 1.8 | **Phase 8: Documentation** | 14.4d | 2024-10-03 | 2024-10-24 |  | 160.99d |  |  | 59.79h |  |  |
| 60 | 1.8.1 | User Documentation | 1.4d | 2024-10-03 | 2024-10-08 | 22 | 160.99d | 0d | DE8 [20%]; DE9 [20%]; DE14 [20%] | 13.4h | 134 pages |  |
| 61 | 1.8.2 | **Review Documentation** | 12d | 2024-10-08 | 2024-10-24 |  | 160.99d |  |  | 46.39h |  |  |
| 62 | 1.8.2.1 | Preparation for User Documentation | 6.96d | 2024-10-08 | 2024-10-17 | 60 | 160.99d | 0d | TE3 [20%]; PE9 [20%]; RE9 [20%]; SE9 [20%] | 21.44h |  | 5 pages/hr |
| 63 | 1.8.2.2 | Review User Documentation Meeting | 3.83d | 2024-10-17 | 2024-10-23 | 62 | 160.99d | 0d | TE3 [20%]; PE9 [20%]; RE9 [20%]; SE9 [20%]; DE8 [20%] | 19.14h |  | 7 pages/hr |
| 64 | 1.8.2.3 | Rework | 1.21d | 2024-10-23 | 2024-10-24 | 63 | 160.99d |  | DE8 [20%]; DE9 [20%]; DE14 [20%] | 5.81h | 174 defects | 6 defects/hr |
