# Work force 100%

Schedule from MS Project, 2024-09-16 to 2025-01-06, status date 2024-09-01.

## Calendars

- Standard: Mon-Fri 08:00-12:00, 13:00-17:00; Sat-Sun off.

## Resources

| Resource |
| --- |
| PM1 |
| PM2 |
| RE1 |
| RE4 |
| RE8 |
| RE9 |
| RE10 |
| RE11 |
| RE12 |
| RE18 |
| RE19 |
| RE20 |
| SE1 |
| SE4 |
| SE8 |
| SE9 |
| SE11 |
| SE12 |
| SE13 |
| SE17 |
| PE1 |
| PE2 |
| PE8 |
| PE9 |
| PE10 |
| PE11 |
| PE12 |
| PE16 |
| TE1 |
| TE2 |
| TE3 |
| TE7 |
| TE8 |
| TE9 |
| TE10 |
| TE15 |
| DE3 |
| DE4 |
| DE5 |
| DE6 |
| DE7 |
| DE8 |
| DE9 |
| DE14 |
| PM7 |
| PM8 |
| PM9 |
| PM10 |
| RE60 |
| RE61 |
| RE64 |
| RE65 |
| RE66 |
| RE6 |
| SE22 |
| SE23 |
| SE24 |
| SE34 |
| PE30 |
| PE31 |
| PE32 |
| PE33 |
| PE34 |
| PE35 |
| PE38 |
| PE39 |
| TE32 |
| TE33 |
| TE34 |
| TE38 |
| TE39 |
| TE40 |
| TE41 |
| DE36 |
| DE37 |
| DE38 |
| DE46 |
| DE47 |
| DE48 |
| DE49 |

## Schedule

| ID | WBS | Task | Duration | Start | Finish | Predecessors | Total slack | Resources | Work | Productivity Rate | Amount of Work |
| --- | --- | --- | --- | --- | --- | --- | --- | --- | --- | --- | --- |
| 1 | 1 | **SPM Assignment 1** | 80.43d | 2024-09-16 08:00 | 2025-01-06 11:27 |  | 0d |  | 1236.72h |  |  |
| 2 | 1.1 | **Phase 1: Project Planning** | 2.33d | 2024-09-16 08:00 | 2024-09-18 10:38 |  | 0d |  | 14.32h |  |  |
| 3 | 1.1.1 | Write Plan | 1.29d | 2024-09-16 08:00 | 2024-09-17 10:19 |  | 0d | PM1 [20%] | 2.06h | 31 pages | 3 pages/hr |
| 4 | 1.1.2 | **Review Plan** | 0.35d | 2024-09-17 10:19 | 2024-09-17 14:07 |  | 0d |  | 11.16h |  |  |
| 5 | 1.1.2.1 | Preparation for Review | 0.16d | 2024-09-17 10:19 | 2024-09-17 11:36 | 3 | 0d | SE1 [20%]; RE1 [20%]; PE1 [20%]; DE3 [20%]; TE1 [20%] | 4.96h |  | 5 pages/hr |
| 6 | 1.1.2.2 | Review Meeting | 0.19d | 2024-09-17 11:36 | 2024-09-17 14:07 | 5 | 0d | PM1 [20%]; SE1 [20%]; RE1 [20%]; DE3 [20%]; PE1 [20%]; TE1 [20%] | 6.2h |  | 5 pages/hr |
| 7 | 1.1.3 | Rework | 0.69d | 2024-09-17 14:07 | 2024-09-18 10:38 | 6 | 0d | PM1 [20%] | 1.1h | 22 defects | 4 defects/hr |
| 8 | 1.2 | **Phase 2: Risk Mitigation and Contingency Planning** | 3.01d | 2024-09-18 10:38 | 2024-09-23 10:43 |  | 0d |  | 18.45h |  |  |
| 9 | 1.2.1 | Write Plan | 1.47d | 2024-09-18 10:38 | 2024-09-19 15:24 | 7 | 0d | PM1 [20%] | 2.35h | 47 pages | 4 pages/hr |
| 10 | 1.2.2 | **Review Plan** | 0.41d | 2024-09-19 15:24 | 2024-09-20 09:40 |  | 0d |  | 14.3h |  |  |
| 11 | 1.2.2.1 | Preparation for Review | 0.29d | 2024-09-19 15:24 | 2024-09-20 08:43 | 9 | 0d | SE4 [20%]; RE4 [20%]; PE2 [20%]; DE4 [20%]; TE2 [20%] | 9.4h |  | 4 pages/hr |
| 12 | 1.2.2.2 | Review Meeting | 0.12d | 2024-09-20 08:43 | 2024-09-20 09:40 | 11 | 0d | SE4 [20%]; RE4 [20%]; PE2 [20%]; DE4 [20%]; PM1 [20%]; TE2 [20%] | 4.9h |  | 8 pages/hr |
| 13 | 1.2.3 | Rework | 1.13d | 2024-09-20 09:40 | 2024-09-23 10:43 | 12 | 0d | PM1 [20%] | 1.8h | 45 pages | 5 defects/hr |
| 14 | 1.3 | **Phase 3: Requirements** | 3.87d | 2024-09-23 10:43 | 2024-09-27 09:40 |  | 0d |  | 38.97h |  |  |
| 15 | 1.3.1 | Write Requirements | 0.56d | 2024-09-23 10:43 | 2024-09-23 16:12 | 13 | 0d | RE18 [20%]; RE19 [20%]; RE20 [20%]; RE11 [20%]; RE12 [20%] | 13.44h | 112 required | 5 req/hr |
| 16 | 1.3.2 | Write Use Case Model | 0.77d | 2024-09-23 16:12 | 2024-09-24 14:21 | 15 | 0d | RE18 [20%]; RE19 [20%]; RE20 [20%]; RE11 [20%]; RE12 [20%] | 12.27h | 46 Use Cases | 3 use case/ 2 hr |
| 17 | 1.3.3 | **Review Requirements/ Use Case Model** | 0.84d | 2024-09-24 14:21 | 2024-09-25 13:04 |  | 0d |  | 8.91h |  |  |
| 18 | 1.3.3.1 | Preparation for Review requirement | 0.19d | 2024-09-24 14:21 | 2024-09-24 15:52 | 16 | 0d | SE8 [20%]; PE8 [20%]; DE5 [20%]; TE3 [20%] | 4.98h |  | 18 req/hr / 4 Use Cases/hr |
| 19 | 1.3.3.2 | Preparation for Review use case | 0.36d | 2024-09-24 15:52 | 2024-09-25 09:45 | 18 | 0d | DE5 [20%]; PE8 [20%]; RE20 [20%]; SE8 [20%]; TE3 [20%] | 0.58h |  |  |
| 20 | 1.3.3.3 | Review Meeting requirement | 0.1d | 2024-09-25 09:45 | 2024-09-25 10:33 | 19 | 0d | DE5 [20%]; PE8; SE8 [20%]; TE3 [20%]; RE20 [20%] | 0.16h |  |  |
| 21 | 1.3.3.4 | Review Meeting use case | 0.19d | 2024-09-25 10:33 | 2024-09-25 13:04 | 20 | 0d | SE8 [20%]; PE8 [20%]; DE5 [20%]; RE20 [20%]; TE3 [20%] | 3.2h |  | 28 req/hhr / 6 Use Cases/hr |
| 22 | 1.3.4 | Rework | 1.7d | 2024-09-25 13:04 | 2024-09-27 09:40 | 21 | 0d | RE18 [20%]; RE19 [20%]; RE20 [20%]; RE11 [20%]; RE12 [20%] | 4.35h | 136 defects | 10 defects/hr |
| 23 | 1.4 | **Phase 4: Analysis** | 1.75d | 2024-09-27 09:40 | 2024-09-30 16:40 |  | 0d |  | 27.83h |  |  |
| 24 | 1.4.1 | Write Analysis Document | 0.41d | 2024-09-27 09:40 | 2024-09-27 13:57 | 22 | 0d | SE12 [20%]; SE13 [20%]; SE17 [20%]; SE11 [20%] | 5.28h | 66 pages | 5 pages/hr |

| ID | WBS | Task | Duration | Start | Finish | Predecessors | Total slack | Resources | Work | Amount of Work | Productivity Rate |
| --- | --- | --- | --- | --- | --- | --- | --- | --- | --- | --- | --- |
| 25 | 1.4.2 | **Review Analysis Document** | 0.7d | 2024-09-27 13:57 | 2024-09-30 10:33 |  | 0d |  | 14.35h |  |  |
| 26 | 1.4.2.1 | Preparation for Analysis Document | 0.52d | 2024-09-27 13:57 | 2024-09-30 09:07 | 24 | 0d | DE6 [20%]; PE9 [20%]; RE9 [20%]; TE7 [20%] | 13.2h | 4 pages/hr |  |
| 27 | 1.4.2.2 | Review Meeting | 0.18d | 2024-09-30 09:07 | 2024-09-30 10:33 | 26 | 0d | DE6 [20%]; PE9 [20%]; RE9; SE17 [20%]; TE7 [20%] | 1.15h | 9 pages/hr |  |
| 28 | 1.4.3 | Rework | 0.64d | 2024-09-30 10:33 | 2024-09-30 16:40 | 27 | 0d | SE12 [20%]; SE13 [20%]; SE17 [20%]; SE11 [20%] | 8.2h | 6 defects/hr | 123 defects |
| 29 | 1.5 | **Phase 5: Design** | 21.39d | 2024-09-30 16:40 | 2024-10-30 10:45 |  | 0d |  | 101.75h |  |  |
| 30 | 1.5.1 | Write Detailed Design | 0.97d | 2024-09-30 16:40 | 2024-10-01 16:25 | 28 | 0d | SE12 [20%]; SE13 [20%]; SE17 [20%]; SE11 [20%]; SE4 [20%] | 7.12h | 5 pages/hr | 89 pages |
| 31 | 1.5.2 | **Review Detailed Design** | 9.04d | 2024-10-01 16:25 | 2024-10-14 16:46 |  | 0d |  | 19.79h |  |  |
| 32 | 1.5.2.1 | Preparation for Detailed Design | 4.5d | 2024-10-01 16:25 | 2024-10-14 14:31 | 30 | 0d | DE4 [20%]; PE2 [20%]; RE4 [20%]; TE2 [20%] | 18h | 4 pages/hr |  |
| 33 | 1.5.2.2 | Review Detailed Design | 0.28d | 2024-10-14 14:31 | 2024-10-14 16:46 | 32 | 0d | TE2 [20%]; DE4 [20%]; PE2 [20%]; RE4; SE12 [20%] | 1.79h | 8 pages/hr |  |
| 34 | 1.5.3 | Rework | 1.53d | 2024-10-14 16:46 | 2024-10-16 13:46 | 33 | 0d | SE12 [70.9%]; SE13 [70.9%]; SE17 [70.9%]; SE11 [216.4%]; SE4 [20%] | 15.49h | 5 defects/hr | 188 defects |
| 35 | 1.5.4 | Write Data Model | 5.29d | 2024-10-16 13:46 | 2024-10-29 14:24 | 34 | 0d | SE12 [20%]; SE13 [20%]; SE17 [20%]; SE11 [20%]; SE1 [20%]; SE4 [20%] | 44.8h | 1 pages/hr |  |
| 36 | 1.5.5 | **Review Data Model** | 0.36d | 2024-10-29 14:24 | 2024-10-30 08:16 |  | 0d |  | 8.68h |  |  |
| 37 | 1.5.5.1 | Preparation for Review | 0.22d | 2024-10-29 14:24 | 2024-10-29 16:09 | 35 | 0d | DE4 [20%]; PE2 [20%]; RE4 [20%]; TE2 [20%] | 4.2h | 4 pages/hr |  |
| 38 | 1.5.5.2 | Review Meeting | 0.14d | 2024-10-29 16:09 | 2024-10-30 08:16 | 37 | 0d | DE4 [20%]; PE2 [20%]; SE13 [20%]; TE2 [20%]; RE4 [20%] | 4.48h | 5 pages/hr |  |
| 39 | 1.5.6 | Rework | 0.31d | 2024-10-30 08:16 | 2024-10-30 10:45 | 38 | 0d | SE11 [20%]; SE12 [20%]; SE13 [20%]; SE8 [20%]; SE9 [20%]; SE17 [20%] | 5.87h | 6 defects/hr | 88 defects |
| 40 | 1.6 | **Phase 6: Coding and Unit Testing** | 34.92d | 2024-10-30 10:45 | 2024-12-18 10:05 |  | 0d |  | 621.24h |  |  |
| 41 | 1.6.1 | Write Code | 15.83d | 2024-10-30 10:45 | 2024-11-21 09:24 | 39 | 0d | PE10 [20%]; PE11 [20%]; PE12 [20%]; PE16 [20%]; PE9 [20%] | 456h | 5 SLOC/hr | 3800 SLOC |
| 42 | 1.6.2 | **Unit Testing** | 16.76d | 2024-11-21 09:24 | 2024-12-13 16:27 |  | 0d |  | 148.02h |  |  |
| 43 | 1.6.2.1 | Prepare/Execute Test Cases | 5.12d | 2024-11-21 09:24 | 2024-11-28 10:21 | 41 | 0d | PE9 [20%]; PE10 [20%]; PE11 [20%]; PE12 [20%]; PE16 [20%] | 81.92h | 10 Test Cases/Day | 256 test cases |
| 44 | 1.6.2.2 | Fix Found Defects | 7.37d | 2024-11-28 10:21 | 2024-12-10 16:04 | 43 | 0d | PE11 [40.1%]; PE12 [40.1%]; PE8 [20%]; PE2 [20%]; PE1 [20%] | 42.53h | 8 Defects/Day | 179 Defects |
| 45 | 1.6.2.3 | Test Fixed Defects | 3.05d | 2024-12-10 16:04 | 2024-12-13 16:27 | 44 | 0d | PE11 [20%]; PE12 [20%]; PE16 [20%]; PE8 [20%]; PE2 [20%] | 23.57h | 12 Defects/Day | 179 Defects |
| 46 | 1.6.3 | **Code Inspection** | 2.33d | 2024-12-13 16:27 | 2024-12-18 10:05 |  | 0d |  | 17.22h |  |  |
| 47 | 1.6.3.1 | Preparation | 1.05d | 2024-12-13 16:27 | 2024-12-16 16:51 | 45 | 0d | DE4 [20%]; RE4 [20%]; SE4 [20%]; TE2 [20%] | 0.4h | 113 SLOC/hr |  |
| 48 | 1.6.3.2 | Code Inspection Meeting | 0.5d | 2024-12-16 16:51 | 2024-12-17 11:51 | 47 | 0d | PE10 [20%]; DE4 [20%]; RE4 [20%]; SE4 [20%]; TE2 [20%] | 1.78h | 189 SLOC/hr |  |
| 49 | 1.6.3.3 | Rework | 0.78d | 2024-12-17 11:51 | 2024-12-18 10:05 | 48 | 0d | PE9 [20%]; PE10 [20%]; PE11 [20%]; PE12 [20%]; PE16 [20%] | 15.04h | 5 defects/hr | 188 Defects |

| ID | WBS | Task | Duration | Start | Finish | Predecessors | Total slack | Free slack | Resources | Work | Productivity Rate | Amount of Work |
| --- | --- | --- | --- | --- | --- | --- | --- | --- | --- | --- | --- | --- |
| 50 | 1.7 | **Phase 7: Testing** | 71.22d | 2024-09-27 09:40 | 2025-01-06 11:27 |  | 0d |  |  | 354.36h |  |  |
| 51 | 1.7.1 | Write Test Plan | 6.64d | 2024-09-27 09:40 | 2024-10-07 15:48 | 22 | 61.85d | 0d | TE7 [20%]; TE8 [20%]; TE9 [20%]; TE10 [20%]; TE15 [20%] | 106.24h | 166 pages | 5 pages/day |
| 52 | 1.7.2 | **Review Test Plan** | 2.73d | 2024-10-07 15:48 | 2024-10-10 13:37 |  | 61.85d |  |  | 24.63h |  |  |
| 53 | 1.7.2.1 | Preparation | 1.3d | 2024-10-07 15:48 | 2024-10-09 09:12 | 51 | 61.85d | 0d | SE8 [20%]; DE5 [20%]; PE8 [20%]; RE8 [20%] | 13.2h |  | 4 pages/hr |
| 54 | 1.7.2.2 | Review Meeting | 0.52d | 2024-10-09 09:12 | 2024-10-09 14:21 | 53 | 61.85d | 0d | TE10 [20%]; DE5 [20%]; PE8 [20%]; RE8 [20%]; SE8 [20%] | 4.15h |  | 8 pages/hr |
| 55 | 1.7.2.3 | Rework | 0.91d | 2024-10-09 14:21 | 2024-10-10 13:37 | 54 | 61.85d |  | TE7 [20%]; TE8 [20%]; TE9 [20%]; TE10 [20%]; TE15 [20%] | 7.28h | 255 defects | 7 defects/hr |
| 56 | 1.7.3 | Execute Test Plan | 4.78d | 2024-12-18 10:05 | 2024-12-25 08:20 | 49 | 0d |  | TE7 [20%]; TE8 [20%]; TE9 [20%]; TE10 [20%]; TE15 [20%] | 114.67h | 215 defects | 9 test cases/day |
| 57 | 1.7.4 | Fix Found Defects | 5.21d | 2024-12-25 08:20 | 2025-01-01 16:22 | 56 | 0d |  | TE7 [20%]; TE8 [20%]; TE9 [20%]; TE10 [20%]; TE1 [20%] | 48.67h | 213 defects | 14 defects/day |
| 58 | 1.7.5 | Test Fixed Defects | 2.51d | 2025-01-01 16:22 | 2025-01-06 11:27 | 57 | 0d |  | TE7 [20%]; TE8 [20%]; TE9 [20%]; TE10 [20%]; TE15 [20%] | 60.14h | 213 defects | 17 defects/day |
| 59 | 1.8 | **Phase 8: Documentation** | 13.14d | 2024-09-27 09:40 | 2024-10-16 10:48 |  | 58.08d |  |  | 59.79h |  |  |
| 60 | 1.8.1 | User Documentation | 1.4d | 2024-09-27 09:40 | 2024-09-30 13:52 | 22 | 58.08d | 0d | DE8 [20%]; DE9 [20%]; DE14 [20%] | 13.4h | 134 pages |  |
| 61 | 1.8.2 | **Review Documentation** | 11.74d | 2024-09-30 13:52 | 2024-10-16 10:48 |  | 58.08d |  |  | 46.39h |  |  |
| 62 | 1.8.2.1 | Preparation for User Documentation | 6.7d | 2024-09-30 13:52 | 2024-10-09 10:28 | 60 | 58.08d | 0d | TE3 [20%]; PE9 [20%]; RE9 [20%]; SE9 [20%] | 21.44h |  | 5 pages/hr |
| 63 | 1.8.2.2 | Review User Documentation Meeting | 3.83d | 2024-10-09 10:28 | 2024-10-15 09:07 | 62 | 58.08d | 0d | TE3 [20%]; PE9 [20%]; RE9 [20%]; SE9 [20%]; DE8 [20%] | 19.14h |  | 7 pages/hr |
| 64 | 1.8.2.3 | Rework | 1.21d | 2024-10-15 09:07 | 2024-10-16 10:48 | 63 | 58.08d |  | DE8 [20%]; DE9 [20%]; DE14 [20%] | 5.81h | 174 defects | 6 defects/hr |
