# Assignment#2

Schedule from MS Project, 2024-09-23 to 2025-06-05.

## Calendars

- Standard: Mon-Fri 08:00-12:00, 13:00-17:00; Sat-Sun off.

## Resources

| Resource |
| --- |
| PM2 |
| RE1 |
| RE4 |
| RE10 |
| RE12 |
| SE1 |
| SE4 |
| SE9 |
| SE11 |
| SE12 |
| SE13 |
| SE17 |
| PE1 |
| PE2 |
| PE8 |
| PE10 |
| PE16 |
| TE1 |
| TE2 |
| TE3 |
| TE10 |
| TE15 |
| DE3 |
| DE4 |
| DE5 |
| DE6 |
| DE7 |
| DE14 |
| RE67 |
| SE22 |
| SE23 |
| SE24 |
| SE34 |
| PE30 |
| PE31 |
| PE32 |
| PE33 |
| PE34 |
| PE35 |
| PE38 |
| PE39 |
| TE32 |
| TE33 |
| TE34 |
| TE38 |
| TE39 |
| TE40 |
| TE41 |
| DE37 |
| DE38 |
| DE46 |
| DE47 |
| DE48 |
| DE49 |

## Schedule

| ID | WBS | Task | Duration | Start | Finish | Predecessors | Total slack | Resources | Work |
| --- | --- | --- | --- | --- | --- | --- | --- | --- | --- |
| 1 | 1 | **SPM Assignment 2** | 183.04d | 2024-09-23 | 2025-06-05 |  | 0d |  | 7584.45h |
| 2 | 1.1 | **Phase 1: Project Plan** | 12.61d | 2024-09-23 | 2024-10-09 |  | 0d |  | 320.32h |
| 3 | 1.1.1 | Write Plan | 4.22d | 2024-09-23 | 2024-09-27 |  | 0d | PM2 | 33.76h |
| 4 | 1.1.2 | **Review Plan** | 6.33d | 2024-09-27 | 2024-10-07 |  | 0d |  | 270.08h |
| 5 | 1.1.2.1 | Preparation for Review | 4.22d | 2024-09-27 | 2024-10-03 | 3 | 0d | DE3; PE1; RE1; SE1; TE1 | 168.8h |
| 6 | 1.1.2.2 | Review Meeting | 2.11d | 2024-10-03 | 2024-10-07 | 5 | 0d | DE3; PE1; PM2; RE1; SE1; TE1 | 101.28h |
| 7 | 1.1.3 | Rework | 2.06d | 2024-10-07 | 2024-10-09 | 6 | 0d | PM2 | 16.48h |
| 8 | 1.2 | **Phase 2: Requirements** | 24.91d | 2024-10-09 | 2024-11-13 |  | 0d |  | 519.21h |
| 9 | 1.2.1 | Write Requirements | 8.1d | 2024-10-09 | 2024-10-21 | 7 | 0d | RE1; RE4 | 129.6h |
| 10 | 1.2.2 | **Review Requirements** | 15.81d | 2024-10-21 | 2024-11-12 |  | 0d |  | 373.61h |
| 11 | 1.2.2.1 | Preparation for Review | 9.73d | 2024-10-21 | 2024-11-04 | 9 | 0d | DE4; PE2; SE4; TE2 | 130.41h |
| 12 | 1.2.2.2 | Review Meeting | 6.08d | 2024-11-04 | 2024-11-12 | 11 | 0d | DE4; PE2; RE4; SE4; TE2 | 243.2h |
| 13 | 1.2.3 | Rework | 1d | 2024-11-12 | 2024-11-13 | 12 | 0d | RE1; RE4 | 16h |
| 14 | 1.3 | **Phase 3: Lab and Enviornment Setup** | 14.12d | 2024-11-13 | 2024-12-03 |  | 0d |  | 349.43h |
| 15 | 1.3.1 | **Hardware** | 11.25d | 2024-11-13 | 2024-11-28 |  | 0d |  | 269.43h |
| 16 | 1.3.1.1 | **Install Network Elements** | 4.69d | 2024-11-13 | 2024-11-20 |  | 0d |  | 104.8h |
| 17 | 1.3.1.1.1 | Routers | 2.14d | 2024-11-13 | 2024-11-15 | 13 | 0d | SE17; SE13; SE12; SE11; SE9 | 40h |
| 18 | 1.3.1.1.2 | Bridge | 2.55d | 2024-11-15 | 2024-11-20 | 17 | 0d | SE22; SE23; SE24; SE13; SE12 | 64.8h |
| 19 | 1.3.1.2 | Install Server | 4.02d | 2024-11-20 | 2024-11-26 | 18 | 0d | SE17; SE22; SE13; SE12; SE11 | 105.2h |
| 20 | 1.3.1.3 | Install Client | 2.41d | 2024-11-26 | 2024-11-28 | 19 | 0d | SE23; SE24; SE12; SE13; SE34 | 59.43h |
| 21 | 1.3.2 | **Software** | 2.87d | 2024-11-28 | 2024-12-03 |  | 0d |  | 80h |
| 22 | 1.3.2.1 | Install Development Tools | 1.61d | 2024-11-28 | 2024-12-02 | 20 | 0d | SE17; SE22; SE23; SE24; SE13 | 40h |
| 23 | 1.3.2.2 | Install Testing Tools | 1.26d | 2024-12-02 | 2024-12-03 | 22 | 0d | SE17; SE11; SE12; SE13; SE9 | 40h |
| 24 | 1.4 | **Phase 4: Analysis/Design Document** | 14.97d | 2024-12-03 | 2024-12-24 |  | 0d |  | 434.81h |
| 25 | 1.4.1 | Write DD | 2.43d | 2024-12-03 | 2024-12-06 | 23 | 0d | SE23; SE24; SE13 | 58.32h |

| ID | WBS | Task | Duration | Start | Finish | Predecessors | Total slack | Free slack | Resources | Work |
| --- | --- | --- | --- | --- | --- | --- | --- | --- | --- | --- |
| 26 | 1.4.2 | **Review DD** | 9.51d | 2024-12-06 | 2024-12-19 |  | 0d |  |  | 303.77h |
| 27 | 1.4.2.1 | Preparation for DD | 5.85d | 2024-12-06 | 2024-12-13 | 25 | 0d |  | PE2; RE4; TE2; DE7 | 187.2h |
| 28 | 1.4.2.2 | Review Meeting | 3.66d | 2024-12-13 | 2024-12-19 | 27 | 0d |  | SE13; DE7; PE2; RE4; TE2 | 116.57h |
| 29 | 1.4.3 | Rework | 3.03d | 2024-12-19 | 2024-12-24 | 28 | 0d |  | SE23; SE24; SE13 | 72.72h |
| 30 | 1.5 | **Phase 5: Data Model** | 7.93d | 2024-12-24 | 2025-01-03 |  | 0d |  |  | 182.39h |
| 31 | 1.5.1 | Create Data Model | 2.58d | 2024-12-24 | 2024-12-27 | 29 | 0d |  | SE13; SE17; SE22 | 61.92h |
| 32 | 1.5.2 | **Review Data Model** | 2.72d | 2024-12-27 | 2024-12-31 |  | 0d |  |  | 57.35h |
| 33 | 1.5.2.1 | Preparation for DM | 1.94d | 2024-12-27 | 2024-12-31 | 31 | 0d |  | DE5; PE8; RE67; TE3 | 39.86h |
| 34 | 1.5.2.2 | Review Meeting | 0.78d | 2024-12-31 | 2024-12-31 | 33 | 0d |  | DE5; PE8; RE67; TE3 | 17.49h |
| 35 | 1.5.3 | Rework | 2.63d | 2024-12-31 | 2025-01-03 | 34 | 0d |  | SE13; SE17; SE22 | 63.12h |
| 36 | 1.6 | **Phase 6: Coding and Unit Testing** | 104.2d | 2025-01-03 | 2025-05-29 |  | 0d |  |  | 3739.22h |
| 37 | 1.6.1 | Write Code | 54.09d | 2025-01-03 | 2025-03-20 | 35 | 0d |  | PE30; PE31; PE32; PE33; PE34; PE35; PE38; PE16 | 2097.3h |
| 38 | 1.6.2 | **Unit Testing** | 24.76d | 2025-03-20 | 2025-04-24 |  | 0d |  |  | 836.48h |
| 39 | 1.6.2.1 | Prepare/Execute Test Cases | 2.27d | 2025-03-20 | 2025-03-24 | 37 | 0d |  | PE30; PE31; PE32; PE33; PE34; PE35; PE38; PE39 | 74.16h |
| 40 | 1.6.2.2 | Fix Found Defects | 9.4d | 2025-03-24 | 2025-04-07 | 39 | 0d |  | PE30; PE31; PE32; PE33; PE34; PE35; PE38; PE39 | 601.6h |
| 41 | 1.6.2.3 | Test Fixed Defects | 13.09d | 2025-04-07 | 2025-04-24 | 40 | 0d |  | PE30; PE31; PE32; PE33; PE34; PE35; PE38; PE39 | 160.72h |
| 42 | 1.6.3 | **Code Inspection** | 25.35d | 2025-04-24 | 2025-05-29 |  | 0d |  |  | 805.44h |
| 43 | 1.6.3.1 | Preparation for Code Inspection | 13.51d | 2025-04-24 | 2025-05-13 | 41 | 0d |  | DE5; RE67; TE3; SE9 | 432.32h |
| 44 | 1.6.3.2 | Code Inspection Meeting | 9d | 2025-05-13 | 2025-05-26 | 43 | 0d |  | DE5; PE39; RE67; SE9; TE3 | 294.4h |
| 45 | 1.6.3.3 | Rework | 2.84d | 2025-05-26 | 2025-05-29 | 44 | 0d |  | PE30; PE31; PE32; PE33; PE34; PE35; PE38; PE39 | 78.72h |
| 46 | 1.7 | **Phase 7: Testing** | 145.52d | 2024-11-13 | 2025-06-05 |  | 0d |  |  | 961.1h |
| 47 | 1.7.1 | Write Test Plan(TP) | 6.52d | 2024-11-13 | 2024-11-22 | 13 | 104.6d | 0d | TE15; TE32; TE33; TE34; TE38; TE39; TE40; TE41 | 417.28h |
| 48 | 1.7.2 | **Review TP** | 34.4d | 2024-11-22 | 2025-01-09 |  | 104.6d |  |  | 268.62h |
| 49 | 1.7.2.1 | Preparation for TP | 10.43d | 2024-11-22 | 2024-12-18 | 47 | 104.6d | 0d | DE6; PE10; RE10; SE9 | 101.5h |
| 50 | 1.7.2.2 | Review TP Meeting | 5.21d | 2024-12-18 | 2025-01-07 | 49 | 104.6d | 0d | DE6; PE10; SE11; TE15; RE10 | 66.64h |
| 51 | 1.7.2.3 | Rework | 1.57d | 2025-01-07 | 2025-01-09 | 50 | 104.6d |  | TE15; TE32; TE33; TE34; TE38; TE39; TE40; TE41 | 100.48h |
| 52 | 1.7.3 | Execute TP(test cases) | 2.28d | 2025-05-29 | 2025-06-03 | 45 | 0d |  | TE15; TE32; TE33; TE34; TE38; TE39; TE40; TE41 | 145.92h |
| 53 | 1.7.4 | Fix Found Defects | 2.02d | 2025-06-03 | 2025-06-05 | 52 | 0d |  | TE15; TE32; TE33; TE34; TE38; TE39; TE40; TE41 | 129.28h |

| ID | WBS | Task | Duration | Start | Finish | Predecessors | Total slack | Free slack | Resources | Work |
| --- | --- | --- | --- | --- | --- | --- | --- | --- | --- | --- |
| 54 | 1.8 | **Phase 8: Documentation** | 48.53d | 2024-11-13 | 2025-01-21 |  | 24.95d |  |  | 537.25h |
| 55 | 1.8.1 | User Documentation | 1.35d | 2024-11-13 | 2024-11-14 | 13 | 24.95d | 0d | DE37; DE38; DE46; DE47; DE48; DE49 | 64.8h |
| 56 | 1.8.2 | **Review UD** | 47.18d | 2024-11-14 | 2025-01-21 |  | 24.95d |  |  | 472.45h |
| 57 | 1.8.2.1 | Preparation for UD Review Meeting | 11.1d | 2024-11-14 | 2024-12-31 | 55 | 24.95d | 0d | PE10; RE10; SE11; TE10 | 241.45h |
| 58 | 1.8.2.2 | Review UD Meeting | 6.95d | 2024-12-31 | 2025-01-16 | 57 | 24.95d | 0d | DE49; PE10; RE10; TE10; SE9 | 98.04h |
| 59 | 1.8.2.3 | Rework | 2.77d | 2025-01-16 | 2025-01-21 | 58 | 24.95d | 0d | DE37; DE38; DE46; DE47; DE48; DE49 | 132.96h |
| 60 | 1.9 | **Phase 9: Training** | 63.95d | 2025-01-31 | 2025-05-01 |  | 24.42d |  |  | 540.72h |
| 61 | 1.9.1 | Training Handouts (TH) | 4.84d | 2025-01-31 | 2025-03-25 | 59 | 24.42d | 0d | PE30; PE31; PE32; PE33; PE34; PE35; PE38; PE16 | 86.72h |
| 62 | 1.9.2 | **Review Training Handouts (TH)** | 27.15d | 2025-03-25 | 2025-05-01 |  | 24.42d |  |  | 454h |
| 63 | 1.9.2.1 | Preparation for TH Review Meeting | 9.69d | 2025-03-25 | 2025-04-08 | 61 | 24.42d | 0d | DE14; RE12; SE11; TE10 | 310.08h |
| 64 | 1.9.2.2 | Review TH Meeting | 4.84d | 2025-04-08 | 2025-04-30 | 63 | 24.42d | 0d | PE39 [103.1%]; DE14 [103.1%]; RE12 [103.1%]; SE11 [103.1%]; TE10 [103.1%] | 63.92h |
| 65 | 1.9.2.3 | Rework | 1.25d | 2025-04-30 | 2025-05-01 | 64 | 24.42d |  | PE30; PE31; PE32; PE33; PE34; PE35; PE38; PE16 | 80h |
